# 机端部署App开发计划

Schedule from a web Gantt chart, 2024-04-29 to 2024-05-24.
Saturdays and Sundays are off

## Schedule

| ID | WBS | Task | Duration | Start | Finish | Predecessors | Status |
| --- | --- | --- | --- | --- | --- | --- | --- |
| 2 | 1 | **需求确认** | 11d | 2024-04-29 | 2024-05-13 |  |  |
| 3 | 1.1 | 需求定义 | 1d | 2024-04-29 | 2024-04-29 |  |  |
| 4 | 1.2 | 需求评审发布 | 9d | 2024-04-30 | 2024-05-10 | 3 | waiting |
| 5 | 1.3 | 成熟度定义 | 1d | 2024-05-13 | 2024-05-13 | 4 | waiting |
| 6 | 2 | **方案设计** | 3d | 2024-05-13 | 2024-05-15 |  |  |
| 7 | 2.1 | 系统方案设计 | 1d | 2024-05-13 | 2024-05-13 | 4 | waiting |
| 8 | 2.2 | 系统方案评审发布 | 1d | 2024-05-14 | 2024-05-14 | 7 | waiting |
| 9 | 2.3 | UX方案设计评审 | 1d | 2024-05-13 | 2024-05-13 | 4 | waiting |
| 10 | 2.4 | 接口定义 | 1d | 2024-05-15 | 2024-05-15 | 8 | waiting |
| 11 | 3 | **软件开发** | 4d | 2024-05-16 | 2024-05-21 |  |  |
| 12 | 3.1 | **智能化软件** | 2d | 2024-05-16 | 2024-05-17 |  |  |
| 13 | 3.1.1 | 代码实现 | 1d | 2024-05-16 | 2024-05-16 | 10 | waiting |
| 14 | 3.1.2 | 单元测试 | 1d | 2024-05-17 | 2024-05-17 | 13 | waiting |
| 15 | 3.2 | **云控系统软件** | 2d | 2024-05-16 | 2024-05-17 |  |  |
| 16 | 3.2.1 | 代码实现 | 1d | 2024-05-16 | 2024-05-16 | 10 | waiting |
| 17 | 3.2.2 | 单元测试 | 1d | 2024-05-17 | 2024-05-17 | 16 | waiting |
| 18 | 3.3 | **应用化系统软件** | 2d | 2024-05-16 | 2024-05-17 |  |  |
| 19 | 3.3.1 | 代码实现 | 1d | 2024-05-16 | 2024-05-16 | 10 | waiting |
| 20 | 3.3.2 | 单元测试 | 1d | 2024-05-17 | 2024-05-17 | 19 | waiting |
| 21 | 3.4 | 功能联调 | 1d | 2024-05-20 | 2024-05-20 | 14, 17, 20 | waiting |
| 22 | 3.5 | 版本提测 | 1d | 2024-05-21 | 2024-05-21 | 21 | waiting |
| 23 | 4 | **集成测试** | 2d | 2024-05-22 | 2024-05-23 |  |  |
| 24 | 4.1 | 功能性能测试 | 1d | 2024-05-22 | 2024-05-22 | 22 | waiting |
| 25 | 4.2 | Bug修复 | 1d | 2024-05-23 | 2024-05-23 | 24 | waiting |

| ID | WBS | Task | Duration | Start | Finish | Predecessors | Status |
| --- | --- | --- | --- | --- | --- | --- | --- |
| 26 | 5 | **系统确认** | 1d | 2024-05-24 | 2024-05-24 |  |  |
| 27 | 5.1 | 产品验收 | 1d | 2024-05-24 | 2024-05-24 | 25 | waiting |
